# 小米BBS随手拍部分计划表

Schedule from MS Project, 2014-06-20 to 2014-07-11, A marks actual dates.

## Calendars

- 标准: Mon-Fri 08:00-12:00, 13:00-17:00; Sat-Sun off.

## Resources

| Resource |
| --- |
| 看具体设计还有前端手头任务 |
| 开发到某一具体界面可能需要添加几张切图 |
| 已完成 |
| 需要服务端添加api |
| 进行中 |

## Schedule

| ID | WBS | Task | Type | Duration | Start | Finish | Predecessors | Complete | Remaining | Total slack | Constraint | Resources | Work | Actual work | Text1 |
| --- | --- | --- | --- | --- | --- | --- | --- | --- | --- | --- | --- | --- | --- | --- | --- |
| 1 | 1 | **设计部分** |  | 6d | 2014-06-20 | 2014-06-27 |  |  |  | 0d |  |  |  |  |  |
| 2 | 1.1 | App设计稿切图 |  | 1d | 2014-06-20 | 2014-06-20 |  |  |  | 0d |  |  |  |  |  |
| 3 | 1.2 | PC站页面切图 | manual | 5d | 2014-06-23 | 2014-06-27 |  |  |  |  |  |  |  |  | 看具体设计还有前端手头任务 |
| 4 | 2 | **客户端** |  | 15d? | 2014-06-23 A | 2014-07-11 |  | 16% | 12.65d? | 0d |  |  | 99.28h | 16.8h |  |
| 5 | 2.1 | **矢量图9.png的制作** |  | 10d | 2014-06-23 A | 2014-07-04 | 2 | 10% | 9d |  |  |  |  |  |  |
| 6 | 2.1.1 | 改版新增28张png切图，需要做成.9矢量图 |  | 10d | 2014-06-23 A | 2014-07-04 |  | 10% | 9d | 5d | finish no earlier than 2014-07-04 |  |  |  | 开发到某一具体界面可能需要添加几张切图 |
| 7 | 2.2 | **功能调整与开发** |  | 13d | 2014-06-23 A | 2014-07-09 | 2 | 23% | 9.99d |  |  |  | 81.6h | 15.76h |  |
| 8 | 2.2.1 | App整体架子，一些通用工具类，模型类 | manual | 1d | 2014-06-23 | 2014-06-23 |  |  |  |  |  | 已完成 | 8h |  |  |
| 9 | 2.2.2 | 图库Tab下小图/大图浏览功能 | manual | 1d | 2014-06-23 | 2014-06-23 |  |  |  |  |  | 已完成 | 8h |  |  |
| 10 | 2.2.3 | 图库Tab根据标签切换 | manual | 1d | 2014-06-23 | 2014-06-23 |  |  |  |  |  | 已完成 | 8h |  |  |
| 11 | 2.2.4 | 查看个人作品专辑 | manual | 1d | 2014-06-23 | 2014-06-23 |  |  |  |  |  | 已完成 | 8h |  |  |
| 12 | 2.2.5 | 拍照、从相册选择上传 | manual | 2d | 2014-07-03 A | 2014-07-04 |  | 60% | 0.8d |  |  | 进行中 [60%] | 9.6h | 5.76h | 剩余部分包括分享以及上传时参加某种类型的比赛 |
| 13 | 2.2.6 | 查看评论，发表评论 | manual | 1d | 2014-06-23 | 2014-06-23 |  |  |  |  |  | 已完成 | 8h |  |  |
| 14 | 2.2.7 | 我的作品页 | manual | 1d | 2014-06-23 | 2014-06-23 |  |  |  |  |  | 已完成 | 8h |  |  |
| 15 | 2.2.8 | 全屏查看某张图片，保存到本地 | manual | 1d | 2014-06-23 | 2014-06-23 |  |  |  |  |  | 已完成 | 8h |  |  |
| 16 | 2.2.9 | 图库Tab根据机型切换 | manual | 2d | 2014-06-26 A | 2014-06-27 |  |  | 2d |  |  |  |  |  | 需要服务端添加api |
| 17 | 2.2.10 | 赛事Tab周赛页 | manual | 2d | 2014-06-30 A | 2014-07-01 |  | 50% | 1d |  |  | 进行中 [50%] | 12h | 8h | 需要服务端添加api |
| 18 | 2.2.11 | 赛事Tab主题赛页 | manual | 1d | 2014-07-02 A | 2014-07-02 |  | 50% | 0.5d |  |  | 进行中 [50%] | 4h | 2h | 需要服务端添加api |
| 19 | 2.2.12 | 周赛活动详情页 | manual | 1d | 2014-07-03 | 2014-07-03 |  |  |  |  |  |  |  |  | 需要服务端添加api |
| 20 | 2.2.13 | 主题赛活动详情页 | manual | 1d | 2014-07-04 | 2014-07-04 |  |  |  |  |  |  |  |  | 需要服务端添加api |
| 21 | 2.2.14 | 最热图片排行页，详情页 | manual | 1d | 2014-06-24 A | 2014-06-24 |  | 90% | 0.1d |  |  |  |  |  | 需要服务端添加api |
| 22 | 2.2.15 | 最热用户排行页，详情页 | manual | 2d | 2014-06-25 A | 2014-06-26 |  | 40% | 1.2d |  |  |  |  |  | 需要服务端添加api |
| 23 | 2.3 | **套界面，细调** |  | 13d | 2014-06-23 A | 2014-07-09 | 2 | 20% | 10.4d |  |  |  | 17.68h | 1.04h |  |
| 24 | 2.3.1 | 20-30个界面细节需要同步调整 | manual | 13d | 2014-06-23 A | 2014-07-09 |  | 20% | 10.4d |  |  | 进行中 [20%] | 17.68h | 1.04h | 在开发功能的同时，界面可能同时需要做调整与优化 |

Notes:
- 3: 看具体设计还有前端手头任务

| ID | WBS | Task | Type | Duration | Start | Finish | Predecessors | Total slack | Constraint | Resources | Work | Text1 |
| --- | --- | --- | --- | --- | --- | --- | --- | --- | --- | --- | --- | --- |
| 25 | 2.4 | **App更新，统计使用信息** |  | 3d | 2014-07-07 | 2014-07-09 |  |  |  |  |  |  |
| 26 | 2.4.1 | 用户使用信息统计 | manual | 3d | 2014-07-07 | 2014-07-09 |  |  |  |  |  | 社区这边自己需不需要保留一份用户使用情况数据，Post到某个api/使用第三方 |
| 27 | 2.5 | **多分辨率适配** |  | 3d | 2014-07-09 | 2014-07-11 |  |  |  |  |  |  |
| 28 | 2.5.1 | 800x480，1280x720，1920x1080三种分辨率适配 | manual | 3d | 2014-07-09 | 2014-07-11 |  |  |  |  |  |  |
| 29 | 2.6 | BUG修复 |  | 3d? | 2014-07-09 | 2014-07-11 |  | 0d | start no earlier than 2014-07-09 |  |  | Bug修复有不确定性，花费的时间可能上下浮动 |
| 30 | 3 | **服务端** |  | 16d | 2014-06-20 | 2014-07-11 |  | 0d |  |  | 32h |  |
| 31 | 3.1 | **app接口开发** |  | 11d | 2014-06-20 | 2014-07-04 |  |  |  |  | 32h |  |
| 32 | 3.1.1 | 接口添加机型分类 | manual | 1d | 2014-06-24 | 2014-06-24 |  |  |  |  |  |  |
| 33 | 3.1.2 | 周赛接口/周赛详情接口 | manual | 1d | 2014-06-20 | 2014-06-20 |  |  |  | 已完成 | 8h |  |
| 34 | 3.1.3 | 主题赛接口/主题赛详情接口 | manual | 1d | 2014-06-20 | 2014-06-20 |  |  |  | 已完成 | 8h |  |
| 35 | 3.1.4 | 最热图片排行/最热图片详情 | manual | 1d | 2014-06-20 | 2014-06-20 |  |  |  | 已完成 | 8h |  |
| 36 | 3.1.5 | 最热用户排行/最热用户详情 | manual | 1d | 2014-06-20 | 2014-06-20 |  |  |  | 已完成 | 8h |  |
| 37 | 3.1.6 | 接口联调 | manual | 9d | 2014-06-24 | 2014-07-04 |  |  |  |  |  |  |
| 38 | 3.2 | **前台部分** |  | 7d | 2014-06-25 | 2014-07-03 | 3 | 0d |  |  |  | 看具体设计还有前端手头任务 |
| 39 | 3.2.1 | 首页 | manual | 1d | 2014-06-25 | 2014-06-25 |  |  |  |  |  |  |
| 40 | 3.2.2 | 图库列表页 | manual | 1d | 2014-06-25 | 2014-06-25 |  |  |  |  |  |  |
| 41 | 3.2.3 | 图库个人页 | manual | 1d | 2014-06-26 | 2014-06-26 |  |  |  |  |  |  |
| 42 | 3.2.4 | 图库图片详情页 | manual | 1d | 2014-06-27 | 2014-06-27 |  |  |  |  |  |  |
| 43 | 3.2.5 | 最热图片月排行 | manual | 1d | 2014-06-30 | 2014-06-30 |  |  |  |  |  |  |
| 44 | 3.2.6 | 摄影之星月排行 | manual | 1d | 2014-07-01 | 2014-07-01 |  |  |  |  |  |  |
| 45 | 3.2.7 | 周赛 | manual | 1d | 2014-07-02 | 2014-07-02 |  |  |  |  |  |  |
| 46 | 3.2.8 | 主题赛 | manual | 1d | 2014-07-03 | 2014-07-03 |  |  |  |  |  |  |
| 47 | 3.3 | **后台开发** |  | 6d | 2014-07-04 | 2014-07-11 |  | 0d |  |  |  | 看具体设计还有前端手头任务 |
| 48 | 3.3.1 | 周赛奖 | manual | 1d | 2014-07-04 | 2014-07-04 |  |  |  |  |  |  |
| 49 | 3.3.2 | 添加机型分类 | manual | 1d | 2014-07-07 | 2014-07-07 |  |  |  |  |  |  |
| 50 | 3.3.3 | 图片列表页修改 | manual | 2d | 2014-07-08 | 2014-07-09 |  |  |  |  |  |  |
| 51 | 3.3.4 | 多图编辑 | manual | 1d | 2014-07-10 | 2014-07-10 |  |  |  |  |  |  |
| 52 | 3.3.5 | 搜索 | manual | 1d | 2014-07-11 | 2014-07-11 |  |  |  |  |  |  |
| 53 | 3.4 | bug 修复 |  | 3d | 2014-07-09 | 2014-07-11 |  | 0d | finish no earlier than 2014-07-11 |  |  |  |
